# Plano de projeto

Schedule from MS Project, 2015-09-22 to 2015-10-30, costs in R$, A marks actual dates.

## Calendars

- Padrão: Mon-Fri 09:00-12:00, 13:00-18:00; Sat-Sun off.

## Resources

| Resource | Rate |
| --- | --- |
| Adan | 40 |
| Ana Raquel | 40 |
| Guilherme | 35 |

## Schedule

| ID | WBS | Task | Duration | Start | Finish | Predecessors | Complete | Remaining | Baseline start | Baseline finish | Baseline duration | Total slack | Resources | Work | Actual work | Cost | Baseline cost | Actual cost |
| --- | --- | --- | --- | --- | --- | --- | --- | --- | --- | --- | --- | --- | --- | --- | --- | --- | --- | --- |
| 1 | 1 | **Projeto PetAdoption** | 28.5d | 2015-09-22 13:00 A | 2015-10-30 17:00 |  | 55% | 12.77d | 2015-09-22 13:00 | 2015-11-04 17:00 | 31.5d | 0d |  | 241h | 120h | 9,113.33 | 9,107.5 | 4,487.5 |
| 2 | 1.1 | **Prospecção** | 4.12d | 2015-09-22 13:00 A | 2015-09-28 14:00 A |  | 100% |  | 2015-09-22 13:00 | 2015-09-28 14:00 | 4.12d |  |  | 13h | 13h | 480 | 415 | 480 |
| 3 | 1.1.1 | **Proposta técnica** | 2.12d | 2015-09-22 13:00 A | 2015-09-24 14:00 A |  | 100% |  | 2015-09-22 13:00 | 2015-09-24 14:00 | 2.12d |  |  | 9h | 9h | 320 | 215 | 320 |
| 4 | 1.1.1.1 | Estudar dominio da aplicação | 0.25d | 2015-09-22 13:00 A | 2015-09-22 15:00 A |  | 100% |  | 2015-09-22 13:00 | 2015-09-22 14:00 | 0.12d |  | Guilherme | 2h | 2h | 70 | 35 | 70 |
| 5 | 1.1.1.2 | Reunir-se com o cliente | 0.12d | 2015-09-22 14:00 A | 2015-09-22 15:00 A | 4 | 100% |  | 2015-09-22 14:00 | 2015-09-22 16:00 | 0.25d |  | Guilherme | 1h | 1h | 35 | 70 | 35 |
| 6 | 1.1.1.3 | Redigir a proposta técnica | 0.62d | 2015-09-22 16:00 A | 2015-09-23 17:00 A | 5 | 100% |  | 2015-09-22 16:00 | 2015-09-23 14:00 | 0.25d |  | Guilherme | 5h | 5h | 175 | 70 | 175 |
| 7 | 1.1.1.4 | Corrigir a proposta técnica | 0.12d | 2015-09-24 13:00 A | 2015-09-24 14:00 A | 9 | 100% |  | 2015-09-24 13:00 | 2015-09-24 14:00 | 0.12d |  | Adan | 1h | 1h | 40 | 40 | 40 |
| 8 | 1.1.2 | **Checklist de requisitos** | 0d | 2015-09-24 08:00 A | 2015-09-24 09:00 A |  | 100% |  | 2015-09-24 08:00 | 2015-09-24 09:00 |  |  |  | 1h | 1h | 40 | 40 | 40 |
| 9 | 1.1.2.1 | Revisar a proposta técnica | 0.12d | 2015-09-24 08:00 A | 2015-09-24 09:00 A | 6 | 100% |  | 2015-09-24 08:00 | 2015-09-24 09:00 | 0.12d |  | Ana Raquel | 1h | 1h | 40 | 40 | 40 |
| 10 | 1.1.3 | **Estimativa preliminar de esfoço/tamanho** | 2d | 2015-09-24 14:00 A | 2015-09-28 14:00 A |  | 100% |  | 2015-09-24 14:00 | 2015-09-28 14:00 | 2d |  |  | 1h | 1h | 40 | 80 | 40 |
| 11 | 1.1.3.1 | Estimar tamanho do projeto | 2d | 2015-09-24 14:00 A | 2015-09-28 14:00 A | 7 | 100% |  | 2015-09-24 14:00 | 2015-09-28 14:00 | 2d |  | Ana Raquel | 1h | 1h | 40 | 80 | 40 |
| 12 | 1.1.4 | **Cronograma/orçamento preliminar** | 0.25d | 2015-09-24 14:00 A | 2015-09-24 16:00 A |  | 100% |  | 2015-09-24 14:00 | 2015-09-24 16:00 | 0.25d |  |  | 2h | 2h | 80 | 80 | 80 |
| 13 | 1.1.4.1 | Estimar cronograma/orçamento | 0.25d | 2015-09-24 14:00 A | 2015-09-24 16:00 A | 7 | 100% |  | 2015-09-24 14:00 | 2015-09-24 16:00 | 0.25d |  | Adan | 2h | 2h | 80 | 80 | 80 |
| 14 | 1.2 | **Análise** | 5.25d | 2015-09-24 14:00 A | 2015-10-01 16:00 A |  | 100% |  | 2015-09-24 14:00 | 2015-10-02 16:00 | 6.25d |  |  | 34h | 34h | 1,260 | 1,499.17 | 1,260 |
| 15 | 1.2.1 | **Documento de requisitos** | 5.12d | 2015-09-24 14:00 A | 2015-10-01 15:00 A |  | 100% |  | 2015-09-24 14:00 | 2015-10-01 15:00 | 5.12d |  |  | 33h | 33h | 1,220 | 1,299.17 | 1,220 |
| 16 | 1.2.1.1 | Definir requisitos funcionais de sistema | 0.62d | 2015-09-24 14:00 A | 2015-09-25 15:00 A | 7 | 100% |  | 2015-09-24 14:00 | 2015-09-25 15:00 | 0.62d |  | Guilherme | 5h | 5h | 175 | 175 | 175 |
| 17 | 1.2.1.2 | Redigir o documento de requisitos | 2.94d | 2015-09-25 15:00 A | 2015-09-30 14:30 A | 16 | 100% |  | 2015-09-25 15:00 | 2015-09-30 14:30 | 2.94d |  | Adan; Guilherme | 24h | 24h | 900 | 862.5 | 900 |
| 18 | 1.2.1.3 | Revisar com a equipe | 0.12d | 2015-09-30 14:30 A | 2015-09-30 15:30 A | 17 | 100% |  | 2015-09-30 14:30 | 2015-10-01 09:40 | 0.42d |  | Adan; Ana Raquel; Guilherme | 2h | 2h | 75 | 191.67 | 75 |
| 19 | 1.2.1.4 | Validar com o cliente | 0.25d | 2015-10-01 13:00 A | 2015-10-01 15:00 A | 18 | 100% |  | 2015-10-01 13:00 | 2015-10-01 15:00 | 0.25d |  | Guilherme | 2h | 2h | 70 | 70 | 70 |
| 20 | 1.2.2 | **Checklist de requisitos** | 0.12d | 2015-10-01 15:00 A | 2015-10-01 16:00 A |  | 100% |  | 2015-10-01 15:00 | 2015-10-02 16:00 | 1.12d |  |  | 1h | 1h | 40 | 200 | 40 |
| 21 | 1.2.2.1 | Corrigir o documento de requisitos | 0.12d | 2015-10-01 15:00 A | 2015-10-01 16:00 A | 19 | 100% |  | 2015-10-01 15:00 | 2015-10-02 16:00 | 0.62d |  | Adan | 1h | 1h | 40 | 200 | 40 |
| 22 | 1.3 | **Projeto** | 1.5d | 2015-10-01 16:00 A | 2015-10-05 11:00 A |  | 100% |  | 2015-10-02 16:00 | 2015-10-07 12:00 | 2.62d |  |  | 6h | 6h | 240 | 400 | 240 |
| 23 | 1.3.1 | **Diagrama de caso de uso** | 0.88d | 2015-10-01 16:00 A | 2015-10-02 15:00 A |  | 100% |  | 2015-10-02 16:00 | 2015-10-06 14:00 | 1.75d |  |  | 3h | 3h | 120 | 240 | 120 |
| 24 | 1.3.1.1 | Fazer diagrama de caso de uso | 0.38d | 2015-10-01 16:00 A | 2015-10-02 15:00 A | 21 | 100% |  | 2015-10-02 16:00 | 2015-10-06 14:00 | 0.75d |  | Adan | 3h | 3h | 120 | 240 | 120 |

| ID | WBS | Task | Type | Duration | Start | Finish | Predecessors | Complete | Remaining | Baseline start | Baseline finish | Baseline duration | Total slack | Free slack | Resources | Work | Actual work | Cost | Baseline cost | Actual cost |
| --- | --- | --- | --- | --- | --- | --- | --- | --- | --- | --- | --- | --- | --- | --- | --- | --- | --- | --- | --- | --- |
| 25 | 1.3.2 | **MER** |  | 0.25d | 2015-10-05 08:00 A | 2015-10-05 11:00 A |  | 100% |  | 2015-10-07 08:00 | 2015-10-07 12:00 | 0.38d |  |  |  | 3h | 3h | 120 | 160 | 120 |
| 26 | 1.3.2.1 | Fazer diagrama modelo entidade relacionamento |  | 0.38d | 2015-10-05 08:00 A | 2015-10-05 11:00 A | 24 | 100% |  | 2015-10-07 08:00 | 2015-10-07 12:00 | 0.5d |  |  | Ana Raquel | 3h | 3h | 120 | 160 | 120 |
| 27 | 1.4 | **Planejamento** |  | 2.81d | 2015-10-01 16:00 A | 2015-10-06 14:30 A |  | 100% |  | 2015-10-02 16:00 | 2015-10-07 16:30 | 3.06d |  |  |  | 13h | 13h | 467.5 | 577.5 | 467.5 |
| 28 | 1.4.1 | Plano definitivo de esforço e tamanho |  | 0.62d | 2015-10-01 16:00 A | 2015-10-02 14:30 A | 21, 19 | 100% |  | 2015-10-02 16:00 | 2015-10-05 15:30 | 0.88d |  |  | Ana Raquel; Guilherme | 5h | 5h | 187.5 | 262.5 | 187.5 |
| 29 | 1.4.2 | Plano definitivo de orçamento |  | 1d | 2015-10-02 14:30 A | 2015-10-06 14:30 A | 28 | 100% |  | 2015-10-05 15:30 | 2015-10-07 16:30 | 1.12d |  |  | Guilherme | 8h | 8h | 280 | 315 | 280 |
| 30 | 1.5 | **Desenvolvimento** |  | 13.31d | 2015-10-06 14:30 A | 2015-10-23 17:00 |  | 44% | 7.46d | 2015-10-07 16:30 | 2015-10-28 17:00 | 15.06d | 0d |  |  | 146h | 54h | 5,532.5 | 5,082.5 | 2,040 |
| 31 | 1.5.1 | **Gerar código fonte** |  | 6d | 2015-10-06 14:30 A | 2015-10-14 14:30 | 29 | 55% | 2.69d | 2015-10-07 16:30 | 2015-10-19 14:30 | 7.75d | 0d |  |  | 110.5h | 54h | 4,225 | 3,775 | 2,040 |
| 32 | 1.5.1.1 | RFC[01] Manter usuários | manual | 6d | 2015-10-06 14:30 A | 2015-10-14 14:30 A |  | 100% |  | 2015-10-07 16:30 | 2015-10-19 14:30 | 7.75d |  |  | Guilherme | 24h | 24h | 840 | 1,050 | 840 |
| 33 | 1.5.1.2 | RFC[02] Manter acesso dos usuários | manual | 3d | 2015-10-06 14:30 A | 2015-10-09 04:30 A |  | 100% |  | 2015-10-07 16:30 | 2015-10-12 14:30 | 2.75d |  |  | Adan | 15h | 15h | 600 | 400 | 600 |
| 34 | 1.5.1.3 | RFC[03] Manter animais | manual | 1.5d | 2015-10-06 14:30 A | 2015-10-08 11:00 A |  | 100% |  | 2015-10-07 16:30 | 2015-10-16 09:00 | 6d |  |  | Ana Raquel | 15h | 15h | 600 | 1,000 | 600 |
| 35 | 1.5.1.4 | RFC[04] Manter notificações | manual | 2.75d | 2015-10-06 14:30 | 2015-10-09 11:30 |  |  |  | 2015-10-07 16:30 | 2015-10-12 14:30 | 2.75d |  |  | Adan | 22h |  | 880 | 400 |  |
| 36 | 1.5.1.5 | RFC[05] Manter adoções | manual | 3.88d | 2015-10-06 14:30 | 2015-10-12 13:30 |  |  |  | 2015-10-07 16:30 | 2015-10-13 15:30 | 3.88d |  |  | Guilherme | 15h |  | 525 | 525 |  |
| 37 | 1.5.1.6 | RFC[06] Manter classificação usuários | manual | 1.94d | 2015-10-06 14:30 | 2015-10-08 15:30 |  |  |  | 2015-10-07 16:30 | 2015-10-12 10:00 | 2.12d |  |  | Ana Raquel | 19.5h |  | 780 | 400 |  |
| 38 | 1.5.2 | **Teste** |  | 7.31d | 2015-10-14 14:30 | 2015-10-23 17:00 |  |  |  | 2015-10-19 14:30 | 2015-10-28 17:00 | 7.31d | 0d |  |  | 35.5h |  | 1,307.5 | 1,307.5 |  |
| 39 | 1.5.2.1 | **Documento de caso de teste** |  | 3.12d | 2015-10-14 14:30 | 2015-10-19 15:30 |  |  |  | 2015-10-19 14:30 | 2015-10-22 15:30 | 3.12d | 0d |  |  | 10.5h |  | 395 | 395 |  |
| 40 | 1.5.2.1.1 | Redigir DCT |  | 2d | 2015-10-14 14:30 | 2015-10-16 14:30 | 31 |  |  | 2015-10-19 14:30 | 2015-10-21 14:30 | 2d | 0d |  | Adan | 5.5h |  | 220 | 220 |  |
| 41 | 1.5.2.1.2 | Revisar documento |  | 0.62d | 2015-10-16 14:30 | 2015-10-19 15:30 | 40 |  |  | 2015-10-21 14:30 | 2015-10-22 15:30 | 0.62d | 0d |  | Guilherme | 5h |  | 175 | 175 |  |
| 42 | 1.5.2.2 | **Plano de teste** |  | 4.19d | 2015-10-19 15:30 | 2015-10-23 17:00 |  |  |  | 2015-10-22 15:30 | 2015-10-28 17:00 | 4.19d | 0d |  |  | 25h |  | 912.5 | 912.5 |  |
| 43 | 1.5.2.2.1 | Redigir plano de teste |  | 1.25d | 2015-10-19 15:30 | 2015-10-22 13:30 | 41 |  |  | 2015-10-22 15:30 | 2015-10-27 13:30 | 1.25d | 0d |  | Guilherme | 10h |  | 350 | 350 |  |
| 44 | 1.5.2.2.2 | Executar plano de teste |  | 0.94d | 2015-10-22 13:30 | 2015-10-23 17:00 | 43 |  |  | 2015-10-27 13:30 | 2015-10-28 17:00 | 0.94d | 0d |  | Adan; Guilherme | 15h |  | 562.5 | 562.5 |  |
| 45 | 1.6 | **Fase de monitoramento e controle** |  | 0.75d | 2015-10-26 08:00 | 2015-10-26 16:00 |  |  |  | 2015-10-29 08:00 | 2015-10-29 16:00 | 0.75d | 0.12d |  |  | 5h |  | 200 | 200 |  |
| 46 | 1.6.1 | Gerar documento de monitoramento e controle |  | 0.25d | 2015-10-26 08:00 | 2015-10-26 10:00 | 44 |  |  | 2015-10-29 08:00 | 2015-10-29 10:00 | 0.25d | 0.12d |  | Ana Raquel | 2h |  | 80 | 80 |  |
| 47 | 1.6.2 | Executar monitoramento e controle |  | 0.38d | 2015-10-26 13:00 | 2015-10-26 16:00 | 46 |  |  | 2015-10-29 13:00 | 2015-10-29 16:00 | 0.38d | 0.12d |  | Adan | 3h |  | 120 | 120 |  |
| 48 | 1.7 | **Fechamento** |  | 2.04d | 2015-10-27 08:00 | 2015-10-29 09:20 |  |  |  | 2015-10-30 08:00 | 2015-11-03 09:20 | 2.04d | 0.12d |  |  | 16h |  | 623.33 | 623.33 |  |
| 49 | 1.7.1 | Gerar ata de reunião |  | 0.75d | 2015-10-27 08:00 | 2015-10-28 10:00 | 47 |  |  | 2015-10-30 08:00 | 2015-11-02 10:00 | 0.75d | 0.12d | 0d | Ana Raquel | 6h |  | 240 | 240 |  |
| 50 | 1.7.2 | Reunir-se com a equipe |  | 0.83d | 2015-10-28 10:00 | 2015-10-29 09:20 | 49 |  |  | 2015-11-02 10:00 | 2015-11-03 09:20 | 0.83d | 0.58d | 0.33d | Adan; Ana Raquel; Guilherme | 10h |  | 383.33 | 383.33 |  |

| ID | WBS | Task | Duration | Start | Finish | Predecessors | Baseline start | Baseline finish | Baseline duration | Total slack | Resources | Work | Cost | Baseline cost |
| --- | --- | --- | --- | --- | --- | --- | --- | --- | --- | --- | --- | --- | --- | --- |
| 51 | 1.8 | **Processo controle de mudança** | 1.5d | 2015-10-29 13:00 | 2015-10-30 17:00 |  | 2015-11-03 13:00 | 2015-11-04 17:00 | 1.5d | 0d |  | 8h | 310 | 310 |
| 52 | 1.8.1 | Registrar mudança | 0.25d | 2015-10-29 13:00 | 2015-10-29 15:00 | 50 | 2015-11-03 13:00 | 2015-11-03 15:00 | 0.25d | 0.25d | Guilherme | 2h | 70 | 70 |
| 53 | 1.8.2 | Estudar viabilidade | 0.25d | 2015-10-30 08:00 | 2015-10-30 10:00 | 52 | 2015-11-04 08:00 | 2015-11-04 10:00 | 0.25d | 0.12d | Ana Raquel | 2h | 80 | 80 |
| 54 | 1.8.3 | Executar mudança | 0.5d | 2015-10-30 13:00 | 2015-10-30 17:00 | 53 | 2015-11-04 13:00 | 2015-11-04 17:00 | 0.5d | 0d | Adan | 4h | 160 | 160 |
